# Cansat 2016 Project EKC Dover Jan 30 2017

Schedule from MS Project, 2016-09-26 to 2017-04-19, A marks actual dates.
East Kent College

## Calendars

- Standard: Mon-Fri 08:00-12:00, 13:00-17:00; Sat-Sun off.

## Resources

| Resource | Group |
| --- | --- |
| Luke | Mechanical design |
| Connor | Mechanical design |
| Jai | Mentor Software |
| Garry | Mentor Mechanical |
| James | Tutor IT |
| Peter | Tutor Engineering |
| Matthew | Electronics |
| Robin | BaseStation GUI |
| Steven |  |
| Ruaraidh |  |
| Rory | Software |
| Old Boy | baseStation Sensors |
| year 3 GUI team | BaseStaion GUI and App Design |
| Kai | BaseStation GUI |
| Dylan | Outreach |
| R | Public Speaking |
| Danial | Parachute |
| Iguars | Backup Cansat tminus |
| Hari | Outreach |
| Web hosting Luca | Free Web hosting |
| glide parachute James | Free Glide parachute |
| Robbie | WebSite |

## Schedule

| ID | WBS | Task | Type | Duration | Start | Finish | Predecessors | Complete | Remaining | Total slack | Resources | Work | Actual work |
| --- | --- | --- | --- | --- | --- | --- | --- | --- | --- | --- | --- | --- | --- |
| 1 | 1 | **Complete Project Cansat EKC Spitfires 2016** |  | 148d? | 2016-09-26 A | 2017-04-19 |  | 32% | 100.01d? | 0d |  | 2672h | 1344h |
| 2 | 1.1 | CanSat Build Start | manual | 1d? | 2016-09-26 | 2016-09-26 |  |  |  |  |  |  |  |
| 3 | 1.2 | **1.0 Mechanical design** |  | 80d? | 2016-09-26 A | 2017-01-13 |  | 39% | 49.09d? | 0d |  | 128h | 120h |
| 4 | 1.2.1 | Mechanical | manual | 1d? | 2016-09-26 | 2016-09-26 | 2 |  |  |  |  |  |  |
| 5 | 1.2.2 | 1.1 Brainstorming | manual | 1d | 2016-09-27 A | 2016-09-28 | 4 |  | 1d |  | Luke; Peter | 8h |  |
| 6 | 1.2.3 | 1.2 Design Can on CAD | manual | 15d | 2016-09-28 A | 2016-10-18 A | 5 | 100% |  |  | Luke | 120h | 120h |
| 7 | 1.2.4 | 1.3 Manufacture Protype 3D printing | manual | 21d | 2016-11-08 A | 2016-12-06 | 6 | 50% | 10.5d |  |  |  |  |
| 8 | 1.2.5 | 1.4 Test Protype | manual | 5d | 2016-12-07 | 2016-12-13 | 7 |  |  |  |  |  |  |
| 9 | 1.2.6 | 1.5Test Impact control | manual | 20d | 2016-12-14 | 2017-01-10 | 8 |  |  |  |  |  |  |
| 10 | 1.2.7 | 1.6 Redesign Can based on results | manual | 1d? | 2017-01-11 | 2017-01-11 | 9 |  |  |  |  |  |  |
| 11 | 1.2.8 | 1.7 Build final design Can | manual | 2d | 2017-01-12 | 2017-01-13 | 10 |  |  |  |  |  |  |
| 12 | 1.3 | **2.0 Electronics hardware** |  | 86.5d? | 2016-09-26 A | 2017-01-24 |  | 63% | 31.65d? | 0d |  | 32h | 20h |
| 13 | 1.3.1 | Electronics | manual | 1d | 2016-09-26 A | 2016-09-26 | 2 | 75% | 0.25d |  |  |  |  |
| 14 | 1.3.2 | 2.1 Brainstorming | manual | 1d | 2016-09-27 A | 2016-09-27 A | 13 | 100% |  |  | Matthew; Peter | 16h | 16h |
| 15 | 1.3.3 | 2.2 Protype primary mission | manual | 31d | 2016-09-28 A | 2016-11-09 A | 14 | 100% |  |  |  |  |  |
| 16 | 1.3.4 | 2.2.1 Calibrate primary mission | manual | 1d? | 2016-11-10 | 2016-11-10 | 15 |  |  |  |  |  |  |
| 17 | 1.3.5 | 2.3 Brainstorm secondry mission | manual | 1d | 2016-09-27 A | 2016-09-27 A | 13 | 100% |  |  |  |  |  |
| 18 | 1.3.6 | 2.3.1 Protype secondry mission | manual | 50d | 2016-09-28 A | 2016-12-06 | 17 | 75% | 12.5d |  |  |  |  |
| 19 | 1.3.7 | 2.3.2 Calibrate secondry mission | manual | 1d? | 2016-12-07 | 2016-12-07 | 18 |  |  |  |  |  |  |
| 20 | 1.3.8 | 2.4 Test combined missions | manual | 1d? | 2016-12-08 A | 2016-12-08 | 16, 19 | 50% | 0.5d? |  |  |  |  |
| 21 | 1.3.9 | 2.5 Protype solar panels | manual | 1d | 2016-12-09 A | 2016-12-09 | 14 | 25% | 0.75d |  | Luke; Peter | 16h | 4h |
| 22 | 1.3.10 | 2.5.1 test sollar panels | manual | 1d? | 2016-12-12 | 2016-12-12 | 21 |  |  |  |  |  |  |
| 23 | 1.3.11 | 2.6 Protype Sheilding | manual | 1d? | 2016-12-09 | 2016-12-09 | 20 |  |  |  |  |  |  |
| 24 | 1.3.12 | 2.6.1 Test Sheilding | manual | 1d? | 2016-12-12 | 2016-12-12 | 23 |  |  |  |  |  |  |
| 25 | 1.3.13 | 2.7 Component compliance | manual | 1d? | 2016-12-13 | 2016-12-13 | 24 |  |  |  |  |  |  |
| 26 | 1.3.14 | 2.7.1 component Location | manual | 1d? | 2016-12-14 | 2016-12-14 | 25 |  |  |  |  |  |  |
| 27 | 1.3.15 | 2.7.2 component Vibration Profing | manual | 1d? | 2016-12-15 | 2016-12-15 | 26 |  |  |  |  |  |  |
| 28 | 1.3.16 | 2.8.1 PCB design | manual | 31d | 2016-11-01 A | 2017-01-06 | 27 | 50% | 15.5d |  |  |  |  |
| 29 | 1.3.17 | 2.8.2 PCB board manufacture | manual | 1d | 2017-01-06 | 2017-01-09 | 28 |  |  |  |  |  |  |
| 30 | 1.3.18 | 2.8.3 PCB test | manual | 7d | 2017-01-09 | 2017-01-18 | 29 |  |  |  |  |  |  |
| 31 | 1.3.19 | 2.8.4 Final changes to PCB layout | manual | 1d | 2017-01-18 | 2017-01-19 | 30 |  |  |  |  |  |  |
| 32 | 1.3.20 | 2.8.5 Order PCBS | manual | 1d | 2017-01-19 | 2017-01-20 | 31 |  |  |  |  |  |  |
| 33 | 1.3.21 | 2.8.6 Solder compoments final version | manual | 1d? | 2017-01-20 | 2017-01-23 | 32 |  |  |  |  |  |  |
| 34 | 1.3.22 | 2.8.7 Install Solar panels | manual | 1d? | 2016-12-13 | 2016-12-13 | 22 |  |  |  |  |  |  |
| 35 | 1.3.23 | 2.9 Install Elecronics into Can | manual | 1d? | 2017-01-23 | 2017-01-24 |  |  |  |  |  |  |  |

| ID | WBS | Task | Type | Duration | Start | Finish | Predecessors | Complete | Remaining | Total slack | Resources | Work | Actual work |
| --- | --- | --- | --- | --- | --- | --- | --- | --- | --- | --- | --- | --- | --- |
| 36 | 1.4 | **3.0 Software programming** |  | 115d? | 2016-09-26 A | 2017-03-03 |  | 59% | 47.73d? | 0d |  | 1104h | 788h |
| 37 | 1.4.1 | Software | manual | 1d? | 2016-09-26 | 2016-09-26 | 2 |  |  |  |  |  |  |
| 38 | 1.4.2 | 3.1 Cansat software ver 1 | manual | 40d | 2016-10-18 A | 2016-12-12 A | 37 | 100% |  |  | Jai; Rory | 640h | 640h |
| 39 | 1.4.3 | 3.2 Cansat software ver 2 | manual | 37d | 2016-12-13 A | 2017-02-01 | 38 | 50% | 18.5d |  | Rory | 296h | 148h |
| 40 | 1.4.4 | 3.3 Cansat software Final | manual | 21d | 2017-02-02 | 2017-03-02 | 39 |  |  |  | Rory | 168h |  |
| 41 | 1.4.5 | 3.4 Install software into Can | manual | 1d? | 2017-03-03 | 2017-03-03 |  |  |  |  |  |  |  |
| 42 | 1.5 | **4.0 Parachute** |  | 117d? | 2016-09-26 A | 2017-03-07 |  | 75% | 28.85d? | 0d |  | 16h | 16h |
| 43 | 1.5.1 | Parachute | manual | 1d? | 2016-09-26 | 2016-09-26 | 2 |  |  |  |  |  |  |
| 44 | 1.5.2 | 4.1 Brainstorming | manual | 1d | 2016-09-27 A | 2016-09-27 A | 43 | 100% |  |  | Garry; Danial | 16h | 16h |
| 45 | 1.5.3 | 4.2 Make Calculations for paracute | manual | 31d | 2016-09-28 A | 2016-11-09 A | 44 | 100% |  |  |  |  |  |
| 46 | 1.5.4 | 4.3 make protype parachute | manual | 23d | 2016-11-10 A | 2016-12-12 A | 45 | 100% |  |  |  |  |  |
| 47 | 1.5.5 | 4.4 Test parachute in wind tunnel | manual | 6d | 2016-12-13 | 2016-12-20 | 46 |  |  |  |  |  |  |
| 48 | 1.5.6 | 4.5 Drop Test parachute with dummy can | manual | 9d | 2016-12-21 | 2017-01-02 | 47 |  |  |  |  |  |  |
| 49 | 1.5.7 | 4.6 Review test provid required decent rate | manual | 1d? | 2017-01-03 | 2017-01-03 | 48 |  |  |  |  |  |  |
| 50 | 1.5.8 | 4.7 Fit parachute to Can | manual | 1d? | 2017-03-07 | 2017-03-07 |  |  |  |  |  |  |  |
| 51 | 1.6 | **5.0 Radio communication** |  | 116d? | 2016-09-26 A | 2017-03-06 |  | 8% | 106.33d? | 0d |  |  |  |
| 52 | 1.6.1 | Radio Can | manual | 1d? | 2016-09-26 | 2016-09-26 | 2 |  |  |  |  |  |  |
| 53 | 1.6.2 | 5.1 Brainstorming | manual | 1d | 2016-11-04 A | 2016-11-04 A | 52 | 100% |  |  |  |  |  |
| 54 | 1.6.3 | 5.2 Protype radio comunications | manual | 6d | 2016-11-07 | 2016-11-14 | 53 |  |  |  |  |  |  |
| 55 | 1.6.4 | 5.2.1 test radio comunications short range | manual | 1d? | 2016-11-15 | 2016-11-15 | 54 |  |  |  |  |  |  |
| 56 | 1.6.5 | 5.3 Protype Long range arial | manual | 1d? | 2016-11-16 | 2016-11-16 | 55 |  |  |  |  |  |  |
| 57 | 1.6.6 | 5.3.1 test long range arial | manual | 1d? | 2016-11-17 | 2016-11-17 | 56 |  |  |  |  |  |  |
| 58 | 1.6.7 | 5.4 Install Communication board into Can | manual | 1d? | 2017-03-06 | 2017-03-06 |  |  |  |  |  |  |  |
| 59 | 1.7 | **6.0 Advertisement and Sponsorship** |  | 3d? | 2016-09-27 A | 2016-09-29 |  | 25% | 2.25d? | 0d |  |  |  |
| 60 | 1.7.1 | Advertising Sponsorship | manual | 1d? | 2016-09-27 | 2016-09-27 | 2 |  |  |  |  |  |  |
| 61 | 1.7.2 | 6.1 Brainstorming | manual | 1d | 2016-09-27 A | 2016-09-27 A | 60 | 100% |  |  |  |  |  |
| 62 | 1.7.3 | 6.2 Sponsers | manual | 1d? | 2016-09-28 | 2016-09-28 |  |  |  |  |  |  |  |
| 63 | 1.7.4 | 6.3 EKC ? | manual | 1d? | 2016-09-29 | 2016-09-29 |  |  |  |  |  |  |  |

| ID | WBS | Task | Type | Duration | Start | Finish | Predecessors | Complete | Remaining | Total slack | Resources | Work | Actual work |
| --- | --- | --- | --- | --- | --- | --- | --- | --- | --- | --- | --- | --- | --- |
| 64 | 1.8 | **7.0 Outreach** |  | 93d? | 2016-09-27 A | 2017-02-02 |  | 29% | 66.18d? | 0d |  | 1304h | 400h |
| 65 | 1.8.1 | Outreach | manual | 1d? | 2016-09-27 | 2016-09-27 | 2 |  |  |  |  |  |  |
| 66 | 1.8.2 | 7.1 Brainstorming | manual | 1d | 2016-09-27 A | 2016-09-27 A | 65 | 100% |  |  | Dylan; Garry | 16h | 16h |
| 67 | 1.8.3 | 7.2 Website | manual | 89d | 2016-09-28 | 2017-01-30 | 66 |  |  |  | Robbie | 712h |  |
| 68 | 1.8.4 | 7.2.1 Domain name | manual | 1d | 2017-01-31 | 2017-01-31 | 67 |  |  |  | Robbie | 8h |  |
| 69 | 1.8.5 | 7.2.2 Content | manual | 1d | 2017-02-01 | 2017-02-01 | 68 |  |  |  | Robbie | 8h |  |
| 70 | 1.8.6 | 7.3 Team speech | manual | 1d | 2016-09-28 | 2016-09-28 | 66 |  |  |  | R | 8h |  |
| 71 | 1.8.7 | 7.4 Race to The Moon Idea | manual | 2d | 2016-09-28 A | 2016-09-29 A | 66 | 100% |  |  | Dylan; Garry | 32h | 32h |
| 72 | 1.8.8 | 7.4.1 Protype and test ballon rocket | manual | 11d | 2016-09-30 A | 2016-10-14 A | 71 | 100% |  |  | Dylan | 88h | 88h |
| 73 | 1.8.9 | 7.4.2 Protype school kids rocket race | manual | 26d | 2016-10-18 A | 2016-11-22 A | 72 | 100% |  |  | Dylan | 208h | 208h |
| 74 | 1.8.10 | 7.4.3 design outreach lesson plan for kids | manual | 14d | 2016-11-23 A | 2016-12-12 | 73 | 25% | 10.5d |  | Dylan | 112h | 28h |
| 75 | 1.8.11 | 7.4.4 design Power point presentation | manual | 14d | 2016-11-23 A | 2016-12-27 | 74, 70 | 25% | 10.5d |  | R | 112h | 28h |
| 76 | 1.8.12 | 7.5 Travel to school deliver outreach | manual | 1d? | 2016-12-13 | 2016-12-13 | 74 |  |  |  |  |  |  |
| 77 | 1.8.13 | 7.6 Evaluate outreach add to report | manual | 1d? | 2017-02-02 | 2017-02-02 | 76, 69 |  |  |  |  |  |  |
| 78 | 1.9 | **8.0 Progress reports** |  | 95d? | 2016-09-27 A | 2017-02-06 |  | 53% | 45.12d? | 0d |  |  |  |
| 79 | 1.9.1 | Reports | manual | 1d? | 2016-12-15 | 2016-12-15 | 2, 77 |  |  |  |  |  |  |
| 80 | 1.9.2 | 8.1 Progress report 1 | manual | 16d | 2016-09-27 A | 2016-10-19 A | 79 | 100% |  |  |  |  |  |
| 81 | 1.9.3 | 8.2 Progress report 2 | manual | 26d | 2016-11-07 A | 2016-12-12 A | 80 | 100% |  |  |  |  |  |
| 82 | 1.9.4 | 8.3 Progress report 3 | manual | 37d | 2016-12-16 | 2017-02-06 | 81, 79 |  |  |  |  |  |  |
| 83 | 1.10 | **9.0 Finanance** |  | 72d? | 2016-09-26 | 2017-01-03 |  |  |  |  |  |  |  |
| 84 | 1.10.1 | Finance | manual | 1d? | 2016-09-27 | 2016-09-27 | 2 |  |  |  |  |  |  |
| 85 | 1.10.2 | 9.1 Cansat parts | manual | 41d | 2016-09-28 | 2016-11-23 | 84 |  |  |  |  |  |  |
| 86 | 1.10.3 | 9.2 Test equipment | manual | 41d | 2016-09-28 | 2016-11-23 | 84 |  |  |  |  |  |  |
| 87 | 1.10.4 | 9.3 travel | manual | 71d | 2016-09-28 | 2017-01-04 | 84 |  |  |  |  |  |  |
| 88 | 1.10.5 | 9.4 Accodadation | manual | 71d | 2016-09-28 | 2017-01-04 | 84 |  |  |  |  |  |  |

| ID | WBS | Task | Type | Duration | Start | Finish | Predecessors | Complete | Remaining | Actual start | Resources | Work |
| --- | --- | --- | --- | --- | --- | --- | --- | --- | --- | --- | --- | --- |
| 89 | 1.11 | **10.0 Travel** |  | 5d? | 2016-09-26 A | 2016-09-30 |  | 14% | 4.3d? |  |  |  |
| 90 | 1.11.1 | Travel | manual | 1d? | 2016-09-26 | 2016-09-26 | 2 |  |  |  |  |  |
| 91 | 1.11.2 | 10.1 Define method | manual | 20d | 2016-09-28 A | 2016-10-25 | 90 | 5% | 19d |  |  |  |
| 92 | 1.11.3 | 10.2 Aquire funding | manual | 1d | 2016-12-22 A | 2016-12-22 A | 91 | 100% |  |  |  |  |
| 93 | 1.11.4 | 10.3 Book accododation | manual | 1d | 2017-01-06 A | 2017-01-06 | 92 | 75% | 0.25d |  |  |  |
| 94 | 1.11.5 | 10.4 Book travel | manual | 1d | 2017-01-06 A | 2017-01-06 | 93 | 75% | 0.25d |  |  |  |
| 95 | 1.11.6 | 10.5 Travel to York for CanSat | manual | 1d? | 2016-09-26 | 2016-09-26 |  |  |  |  |  |  |
| 96 | 1.12 | **11.0 Base Station** |  | 54d? | 2016-09-26 | 2016-12-08 |  | 20% | 42.98d? | 2016-09-27 |  |  |
| 97 | 1.12.1 | Base Station | manual | 1d? | 2016-09-27 | 2016-09-27 | 2 |  |  |  |  |  |
| 98 | 1.12.2 | 11.0 Brain storming | manual | 3d | 2016-11-25 A | 2016-11-29 A | 97 | 100% |  |  |  |  |
| 99 | 1.12.3 | 11.1 Base station sensors | manual | 51d | 2016-11-30 A | 2017-02-08 | 98 | 13% | 44.25d |  |  |  |
| 100 | 1.12.4 | 11.2 Base station communication | manual | 51d | 2017-02-08 A | 2017-04-19 | 98 | 13% | 44.25d |  |  |  |
| 101 | 1.12.5 | 11.3 Base station User Interface | manual | 9d | 2017-02-08 A | 2017-02-20 | 98 | 25% | 6.75d |  |  |  |
| 102 | 1.12.6 | 11.4 Base station yargi ariel | manual | 9d | 2017-02-08 A | 2017-02-20 | 98 | 75% | 2.25d |  |  |  |
| 103 | 1.12.7 | 11.5 Basetsation complete | manual | 1d? | 2016-12-13 | 2016-12-13 | 102 |  |  |  |  |  |
| 104 | 1.13 | **12.0 Backup equipment** |  | 54d? | 2016-09-26 A | 2016-12-08 |  | 2% | 52.85d? |  |  | 88h |
| 105 | 1.13.1 | Backup | manual | 1d? | 2016-09-26 | 2016-09-26 | 2 |  |  |  |  |  |
| 106 | 1.13.2 | 12.1 backup brainstorming | manual | 1d | 2016-11-25 A | 2016-11-25 A | 105 | 100% |  |  |  |  |
| 107 | 1.13.3 | 12.2 Build backup CanSat | manual | 11d | 2016-11-28 | 2016-12-12 | 106 |  |  |  | Iguars | 88h |
| 108 | 1.13.4 | 12.3 Build backup Basestation | manual | 11d | 2016-11-28 | 2016-12-12 | 106 |  |  |  |  |  |
| 109 | 1.13.5 | 12.4 Make backup Arial | manual | 11d | 2016-11-28 | 2016-12-12 | 106 |  |  |  |  |  |
| 110 | 1.13.6 | 12.5 Make backup parachute | manual | 11d | 2016-11-28 | 2016-12-12 | 106 |  |  |  |  |  |
| 111 | 1.13.7 | 12.6 Backup procedures /equipment ready | manual | 1d? | 2016-12-14 | 2016-12-14 | 110, 103 |  |  |  |  |  |
| 112 | 1.14 | **13 .0 Launch procedures** |  | 54d? | 2016-09-26 | 2016-12-08 |  | 20% | 43.2d? | 2016-09-27 |  |  |
| 113 | 1.14.1 | Launch checks | manual | 1d? | 2016-09-27 | 2016-09-27 | 2 |  |  |  |  |  |
| 114 | 1.14.2 | 13.1 launchday check sheet | manual | 12d | 2016-11-25 A | 2016-12-12 | 113 | 25% | 9d |  |  |  |
| 115 | 1.14.3 | 13.2 launch procedures practiced | manual | 1d? | 2017-03-10 | 2017-03-10 | 114, 111 |  |  |  |  |  |
| 116 | 1.14.4 | Ready for Lift Off | manual | 1d | 2017-03-13 | 2017-03-13 | 115 |  |  |  |  |  |

| ID | WBS | Task | Type | Duration | Start | Finish | Predecessors |
| --- | --- | --- | --- | --- | --- | --- | --- |
| 117 | 1.15 | **CanSat Build End** |  | 1d | 2017-03-02 | 2017-03-02 |  |
| 118 | 1.15.1 | All CanSat Parts installed | manual | 1d? | 2017-03-08 | 2017-03-08 | 11, 35, 41, 50, 58 |
| 119 | 1.15.2 | Base Station Ready | manual | 1d? | 2016-12-14 | 2016-12-14 | 103 |
| 120 | 1.15.3 | Flight testing | manual | 1d? | 2017-03-09 | 2017-03-09 | 118, 119, 111 |
| 121 | 1.15.4 | Parachute Test on working can | manual | 1d? | 2017-03-10 | 2017-03-10 | 120 |
| 122 | 1.15.5 | Comms test | manual | 1d? | 2017-03-10 | 2017-03-10 | 120 |
| 123 | 1.15.6 | Base Station Test | manual | 1d? | 2017-03-10 | 2017-03-10 | 120 |
